How a schedule from OmniPlan changed from version to version. A marks actual dates.

## Version 1 (saved 2013-08-07)

Note of the change: 初始化计划

| ID | WBS | Task | Start | Predecessors |
| --- | --- | --- | --- | --- |
| 1 | 1 | **UI框架** |  |  |
| 2 |  | 自动换肤 | 2013-08-06 |  |
| 3 |  | 滚动组件 | 2013-08-08 | 2 |
| 4 |  | 列表组件 | 2013-08-15 | 3 |
| 5 |  | Slider | 2013-08-20 | 4 |
| 6 | 2 | **首页+主题详情** |  |  |
| 7 |  | 策划 | 2013-08-06 |  |
| 8 |  | 设计 |  |  |
| 9 |  | 主题列表开发 | 2013-08-23 | 5 |
| 10 |  | 主题详情开发 | 2013-08-26 | 9 |
| 11 | 3 | **画画** |  |  |
| 12 |  | 策划完善 | 2013-08-07 | 7 |
| 13 |  | 设计笔触 | 2013-08-27 | 10 |
| 14 |  | 撤销恢复 | 2013-08-28 | 13 |
| 15 |  | 播放 | 2013-09-11 | 14 |
| 16 |  | UI开发 | 2013-09-18 | 15 |
| 17 |  | 贴纸旋转 | 2013-09-22 | 16 |
| 18 | 4 | **完成绘画（自动存储）** |  |  |
| 19 |  | 策划完善 | 2013-08-08 | 12 |
| 20 |  | 功能研发 | 2013-09-23 | 17 |
| 21 | 5 | **画廊** |  |  |
| 22 |  | 策划完善 | 2013-08-12 | 19 |
| 23 |  | 画廊列表研发 | 2013-09-25 | 20 |
| 24 |  | 作品详情 | 2013-10-09 | 23 |
| 25 |  | 作品浏览 | 2013-10-10 | 24 |
| 26 | 6 | **用户相关** |  |  |
| 27 |  | 登陆注册策划 | 2013-08-14 | 22 |
| 28 |  | 登陆注册开发 | 2013-10-12 | 25 |
| 29 |  | 个人信息策划 | 2013-08-15 | 27 |
| 30 |  | 个人信息开发 | 2013-10-15 | 28 |
| 31 | 7 | **商店** |  |  |
| 32 |  | 数据策划 | 2013-08-19 | 29 |
| 33 |  | 界面策划 | 2013-08-22 | 32 |
| 34 |  | 商店列表 | 2013-10-17 | 30 |
| 35 |  | 商品详情 | 2013-10-18 | 34 |
| 36 | 8 | **致父母** |  |  |
| 37 |  | 策划 | 2013-08-26 | 33 |
| 38 |  | 开发 | 2013-10-23 | 35 |

## Version 2 (saved 2013-08-08)

Note of the change: Merge branch 'master' of https://github.com/Pamakids/DrawingBoard

Changed:

| ID | Task | Complete |
| --- | --- | --- |
| 3 | 滚动组件 | 0% → 10% |
| 12 | 策划完善 | 0% → 80% |

## Version 3 (saved 2013-08-08)

Note of the change: 画板进度更新

Changed:

| ID | Task | Complete |
| --- | --- | --- |
| 3 | 滚动组件 | 10% → 30% |

## Version 4 (saved 2013-08-13)

Note of the change: 进度更新

Complete tasks 0 → 1.

Changed:

| ID | Task | Start | Complete |
| --- | --- | --- | --- |
| 3 | 滚动组件 |  | 30% → 70% |
| 4 | 列表组件 | 2013-08-15 → 2013-08-20 (+5d) |  |
| 5 | Slider | 2013-08-20 → 2013-08-23 (+3d) |  |
| 9 | 主题列表开发 | 2013-08-23 → 2013-08-28 (+5d) |  |
| 10 | 主题详情开发 | 2013-08-26 → 2013-08-29 (+3d) |  |
| 12 | 策划完善 |  | 80% → 100% |
| 13 | 设计笔触 | 2013-08-27 → 2013-08-30 (+3d) |  |
| 14 | 撤销恢复 | 2013-08-28 → 2013-09-02 (+5d) |  |
| 15 | 播放 | 2013-09-11 → 2013-09-16 (+5d) |  |
| 16 | UI开发 | 2013-09-18 → 2013-09-24 (+6d) |  |
| 17 | 贴纸旋转 | 2013-09-22 → 2013-09-25 (+3d) |  |
| 20 | 功能研发 | 2013-09-23 → 2013-09-26 (+3d) |  |
| 23 | 画廊列表研发 | 2013-09-25 → 2013-09-29 (+4d) |  |
| 24 | 作品详情 | 2013-10-09 → 2013-10-12 (+3d) |  |
| 25 | 作品浏览 | 2013-10-10 → 2013-10-14 (+4d) |  |
| 28 | 登陆注册开发 | 2013-10-12 → 2013-10-16 (+4d) |  |
| 30 | 个人信息开发 | 2013-10-15 → 2013-10-18 (+3d) |  |
| 34 | 商店列表 | 2013-10-17 → 2013-10-22 (+5d) |  |
| 35 | 商品详情 | 2013-10-18 → 2013-10-23 (+5d) |  |
| 38 | 开发 | 2013-10-23 → 2013-10-28 (+5d) |  |

## Version 5 (saved 2013-08-20)

Note of the change: 进度更新

Complete tasks 1 → 2.

Changed:

| ID | Task | Complete |
| --- | --- | --- |
| 3 | 滚动组件 | 70% → 100% |

## Version 6 (saved 2013-08-27)

Note of the change: 更新计划

Complete tasks 2 → 4.

Added:

| ID | Task | Start | Resources |
| --- | --- | --- | --- |
| 7 | **1.0** |  |  |
| 9 | 画笔画画 | 2013-08-27 | 阿毅 |
| 13 | **2.0** |  |  |

Changed:

| ID | Task | Start | Complete | Predecessors |
| --- | --- | --- | --- | --- |
| 5 | Slider |  | 0% → 100% |  |
| 8 | 设计笔触 | 2013-08-30 → 2013-08-24 (-6d) |  | 20 → none |
| 10 | 播放 | 2013-09-16 → 2013-08-24 (-23d) |  | 14 → none |
| 11 | UI开发 | 2013-09-24 → 2013-08-22 (-33d) |  | 10 → none |
| 12 | 贴纸旋转 | 2013-09-25 → 2013-09-11 (-14d) | 0% → 100% | 11 → none |
| 14 | 撤销恢复 | 2013-09-02 → 2013-08-27 (-6d) |  | 8 → none |
| 19 | 主题列表开发 | 2013-08-28 → 2013-09-10 (+13d) |  |  |
| 20 | 主题详情开发 | 2013-08-29 → 2013-09-12 (+14d) |  |  |
| 23 | 功能研发 | 2013-09-26 → 2013-09-12 (-14d) |  |  |
| 26 | 画廊列表研发 | 2013-09-29 → 2013-09-17 (-12d) |  |  |
| 27 | 作品详情 | 2013-10-12 → 2013-09-25 (-17d) |  |  |
| 28 | 作品浏览 | 2013-10-14 → 2013-09-26 (-18d) |  |  |
| 31 | 登陆注册开发 | 2013-10-16 → 2013-09-29 (-17d) |  |  |
| 33 | 个人信息开发 | 2013-10-18 → 2013-10-09 (-9d) |  |  |
| 37 | 商店列表 | 2013-10-22 → 2013-10-11 (-11d) |  |  |
| 38 | 商品详情 | 2013-10-23 → 2013-10-12 (-11d) |  |  |
| 40 | 策划 | 2013-08-26 → 2013-08-24 (-2d) |  |  |
| 41 | 开发 | 2013-10-28 → 2013-10-16 (-12d) |  |  |
